# Neuer Aussenstandort

Schedule from MS Project, 2025-05-26 to 2025-08-04, costs in CHF.
IT-AG

## Calendars

- Standard: Mon-Fri 08:00-12:00, 13:00-17:00; Sat-Sun off.

## Resources

| Resource | Group | Rate |
| --- | --- | --- |
| Eden Bruderer | IT-AG | 120 |
| David Strainovic | IT-AG | 100 |

## Schedule

| ID | WBS | Task | Type | Duration | Start | Finish | Predecessors | Total slack | Resources | Work | Cost | Aufwand | Lieferobjekt |
| --- | --- | --- | --- | --- | --- | --- | --- | --- | --- | --- | --- | --- | --- |
| 1 | 1 | **Projekt: Neuer Aussenstandort Frauenfeld** |  | 51d | 2025-05-26 | 2025-08-04 |  | 0d |  | 280h | 31,920 |  |  |
| 2 | 1.1 | **Analyse** |  | 4d | 2025-05-26 | 2025-05-29 |  | 0d |  | 24h | 2,720 |  |  |
| 3 | 1.1.1 | Projektauftrag prüfen |  | 2d | 2025-05-26 | 2025-05-27 |  | 0d | Eden Bruderer [50%] | 8h | 960 | 6h |  |
| 4 | 1.1.2 | Rahmenbedingungen klären |  | 2d | 2025-05-28 | 2025-05-29 | 3 | 0d | David Strainovic [50%] | 8h | 800 | 4h | Konzept |
| 5 | 1.1.3 | Risikoanalyse |  | 2d | 2025-05-28 | 2025-05-29 | 3 | 0d | Eden Bruderer [50%] | 8h | 960 | 10h | Risikobericht |
| 6 | 1.1.4 | MS: Projekt bewilligt | milestone | 0d | 2025-05-26 | 2025-05-26 |  | 6d |  |  |  |  |  |
| 7 | 1.2 | **Konzept-Evaluation** |  | 3d | 2025-05-29 | 2025-06-03 | 2 | 0d |  | 20h | 2,240 |  |  |
| 8 | 1.2.1 | Pflichtenheft erstellen |  | 2d | 2025-05-30 | 2025-06-02 |  | 1d | David Strainovic [50%] | 8h | 800 | 4h | Pflichtenheft |
| 9 | 1.2.2 | Expertengespräche durchführen |  | 3d | 2025-05-30 | 2025-06-03 |  | 0d | Eden Bruderer [50%] | 12h | 1,440 | 12h |  |
| 10 | 1.2.3 | MS: Projekt erfolgreich zu Ende gebracht | milestone | 0d | 2025-05-29 | 2025-05-29 |  | 3d |  |  |  |  |  |
| 11 | 1.3 | **Umsetzungsplanung** |  | 22d | 2025-06-03 | 2025-07-03 | 7 | 0d |  | 100h | 11,600 |  |  |
| 12 | 1.3.1 | Projektstrukturplan erstellen |  | 2d | 2025-06-04 | 2025-06-05 |  | 0d | Eden Bruderer [50%] | 8h | 960 | 6h | PSP |
| 13 | 1.3.2 | Liegenschaftsliste erstellen |  | 2d | 2025-06-06 | 2025-06-09 | 12 | 0d | David Strainovic [50%] | 8h | 800 | 4h | Gebäude rausgesucht |
| 14 | 1.3.3 | Liegenschaften besichtigen |  | 18d | 2025-06-10 | 2025-07-03 | 13 | 0d | Eden Bruderer [50%] | 72h | 8,640 | 25h |  |
| 15 | 1.3.4 | Offerten für Einrichtung einholen |  | 3d | 2025-06-10 | 2025-06-12 | 13 | 15d | David Strainovic [50%] | 12h | 1,200 | 6h | Offerten |
| 16 | 1.3.5 | MS: Für ein Gebäude entschieden | milestone | 0d | 2025-06-03 | 2025-06-03 |  | 22d |  |  |  |  |  |
| 17 | 1.4 | **Realisierung** |  | 19d | 2025-07-03 | 2025-07-30 | 11 | 0d |  | 112h | 12,720 |  |  |
| 18 | 1.4.1 | Mietvertrag prüfen & unterzeichnen |  | 3d | 2025-07-04 | 2025-07-08 |  | 0d | Eden Bruderer [50%] | 12h | 1,440 | 16h | Vertrag |
| 19 | 1.4.2 | Einrichtung bestellen |  | 3d | 2025-07-04 | 2025-07-08 |  | 16d | David Strainovic [50%] | 12h | 1,200 | 8h | Büroeinrichtung |
| 20 | 1.4.3 | Gebäude übernehmen |  | 10d | 2025-07-09 | 2025-07-22 | 18 | 0d | Eden Bruderer [50%] | 40h | 4,800 | 2h | Schlüssel |
| 21 | 1.4.4 | IT-Infrastruktur einrichten |  | 6d | 2025-07-23 | 2025-07-30 | 20 | 0d | Eden Bruderer [50%] | 24h | 2,880 | 35h | Funktionierende Infrastruktur |
| 22 | 1.4.5 | Neuen Standort einrichten |  | 6d | 2025-07-23 | 2025-07-30 | 20 | 0d | David Strainovic [50%] | 24h | 2,400 |  | Eingerichtetes Büro |
| 23 | 1.4.6 | MS: Standort bereit zur Einführung | milestone | 0d | 2025-07-03 | 2025-07-03 |  | 19d |  |  |  |  |  |
| 24 | 1.5 | **Einführung** |  | 3d | 2025-07-30 | 2025-08-04 | 17 | 0d |  | 24h | 2,640 |  |  |
| 25 | 1.5.1 | Neuer Standort den Mitarbeitern übergeben |  | 2d | 2025-07-31 | 2025-08-01 |  | 1d | Eden Bruderer [50%] | 8h | 960 | 4h |  |
| 26 | 1.5.2 | Einweihungsfest |  | 2d | 2025-07-31 | 2025-08-01 |  | 0d | David Strainovic [50%] | 8h | 800 | 8h | Glückliche Mitarbeiter |
| 27 | 1.5.3 | Abschlussmeeting |  | 1d | 2025-08-04 | 2025-08-04 | 26 | 0d | Eden Bruderer [50%]; David Strainovic [50%] | 8h | 880 | 4h |  |
| 28 | 1.5.4 | MS: Projektergebnis erfolgreich getestet und eingeführt | milestone | 0d | 2025-07-30 | 2025-07-30 |  | 3d |  |  |  |  |  |
